# planning

Schedule from MS Project, 2005-12-05 to 2006-01-18, status date 2005-10-20, 2 hours a day.
FBI

## Calendars

- Scolaire: Mon-Sun 20:00-22:00. Exceptions (off unless hours are given): 2005-12-16 to 2006-01-01.

## Resources

| Resource | Group |
| --- | --- |
| Laurent Barbisan | eMagine |
| Caroline Rondini | eMagine |
| Anthony Ogier | eMagine |
| Jean-Baptiste Renaudin | eMagine |
| Mathieu Mancel |  |

## Schedule

| ID | WBS | Task | Type | Duration | Start | Finish | Predecessors | Total slack | Free slack | Constraint | Resources | Work |
| --- | --- | --- | --- | --- | --- | --- | --- | --- | --- | --- | --- | --- |
| 1 | 1 | **Gestion de projet** |  | 12d | 2006-01-07 | 2006-01-18 |  | 0d |  |  |  | 11h |
| 2 | 1.1 | GP : Préparation entretien |  | 3h | 2006-01-07 | 2006-01-09 |  | 3.02d | 0d | start no earlier than 2006-01-07 | Jean-Baptiste Renaudin | 3h |
| 3 | 1.2 | GP : Entretien individuel |  | 2.95h | 2006-01-09 | 2006-01-13 | 2 | 3.02d |  | start no earlier than 2006-01-09 | Laurent Barbisan; Caroline Rondini; Anthony Ogier; Jean-Baptiste Renaudin; Mathieu Mancel [66.7%] | 4h |
| 4 | 1.3 | GP : Mise à jour de l'avancement |  | 2h | 2006-01-17 | 2006-01-17 | 16, 26, 30, 36, 3 | 0d |  | start no earlier than 2005-12-10 | Jean-Baptiste Renaudin | 2h |
| 5 | 1.4 | GP : Plannification de la phase suivante |  | 2h | 2006-01-18 | 2006-01-18 | 4 | 0d |  | start no earlier than 2005-12-10 | Jean-Baptiste Renaudin | 2h |
| 6 | 2 | **Réalisation du développement** |  | 26d | 2005-12-05 | 2006-01-16 |  | 0d |  |  |  | 75h |
| 7 | 2.1 | Dev : Réunion initial |  | 2h | 2005-12-05 | 2005-12-05 |  | 6.8d | 4.38d | start no earlier than 2005-12-05 | Laurent Barbisan; Jean-Baptiste Renaudin; Anthony Ogier | 6h |
| 8 | 2.2 | Dev : Création des paquetages |  | 1h | 2005-12-10 | 2005-12-10 | 7 | 0.42d | 0d | start no earlier than 2005-12-10 | Anthony Ogier | 1h |
| 9 | 2.3 | Dev : Création des classes (couche Métier) |  | 3h | 2005-12-10 | 2005-12-12 | 8 | 0.42d | 0d |  | Anthony Ogier; Laurent Barbisan | 6h |
| 10 | 2.4 | Dev : Création des classes (couche DAO) |  | 7h | 2005-12-12 | 2005-12-15 | 9 | 0.42d | 0d |  | Anthony Ogier; Laurent Barbisan | 14h |
| 11 | 2.5 | Dev : Création des classes (couche Manager) |  | 7h | 2005-12-15 | 2006-01-05 | 10 | 0.42d | 0d |  | Anthony Ogier; Laurent Barbisan | 14h |
| 12 | 2.6 | Dev : Mise en place de Struts (Action, Form) |  | 20h | 2006-01-02 | 2006-01-11 |  | 0d |  | start no earlier than 2006-01-02 | Jean-Baptiste Renaudin | 20h |
| 13 | 2.7 | Dev : Mise en place de CeWolf |  | 2h | 2006-01-12 | 2006-01-12 | 12 | 0d |  | start no earlier than 2005-12-10 | Anthony Ogier | 2h |
| 14 | 2.8 | Dev : Mise en place du paramétrage de l'application |  | 3h | 2006-01-13 | 2006-01-14 | 13 | 0d |  | start no earlier than 2005-12-10 | Anthony Ogier | 3h |
| 15 | 2.9 | Dev : Préparation de la présentation de la version Bêta |  | 2h | 2006-01-14 | 2006-01-15 | 14 | 0d |  |  | Jean-Baptiste Renaudin; Caroline Rondini | 4h |
| 16 | 2.10 | Dev : Test de la présentation de la version Bêta |  | 3h | 2006-01-15 | 2006-01-16 | 15 | 0d |  |  | Laurent Barbisan; Caroline Rondini; Anthony Ogier; Jean-Baptiste Renaudin; Mathieu Mancel | 5h |
| 17 | 3 | **Réalisation des tests** |  | 25d | 2005-12-05 | 2006-01-16 |  | 1d |  |  |  | 109h |
| 18 | 3.1 | Test : Réunion initiale |  | 2h | 2005-12-05 | 2005-12-05 |  | 1d | 0d | start no earlier than 2005-12-05 | Jean-Baptiste Renaudin; Caroline Rondini; Mathieu Mancel [300%] | 6h |
| 19 | 3.2 | Test : Mise en place (Junit, Cactus, générateur de rapport de test) |  | 10h | 2005-12-05 | 2005-12-07 | 18 | 1.85d | 0d | start no earlier than 2005-12-05 | Caroline Rondini; Mathieu Mancel | 10h |
| 20 | 3.3 | Test : Rédaction des tests unitaires (couche Métier) |  | 8h | 2005-12-07 | 2005-12-09 | 19 | 2.5d | 0d |  | Jean-Baptiste Renaudin; Mathieu Mancel | 8h |
| 21 | 3.4 | Test : Rédaction des tests unitaires (couche DAO) |  | 20h | 2005-12-09 | 2005-12-14 | 20 | 2.5d | 0.5d |  | Mathieu Mancel; Jean-Baptiste Renaudin | 20h |
| 22 | 3.5 | Test : Rédaction des tests unitaires (couche Manager) |  | 20h | 2005-12-15 | 2005-12-19 | 21 | 2d |  |  | Mathieu Mancel | 20h |
| 23 | 3.6 | Test : Exécution des tests unitaires | milestone | 0h | 2006-01-05 | 2006-01-05 | 22, 11 | 0.42d | 0d |  |  |  |
| 24 | 3.7 | Test : Rédaction des tests In-Container |  | 40h | 2005-12-07 | 2006-01-13 | 19 | 1.85d | 0d |  | Caroline Rondini | 40h |
| 25 | 3.8 | Test : Exécution des tests In-Container | milestone | 0h | 2006-01-13 | 2006-01-13 | 24 | 1.85d | 0d |  |  |  |
| 26 | 3.9 | Test : Rédaction de fiche de bug |  | 5h | 2006-01-13 | 2006-01-16 | 23, 25 | 1d |  |  | Caroline Rondini; Mathieu Mancel | 5h |

| ID | WBS | Task | Type | Duration | Start | Finish | Predecessors | Total slack | Free slack | Constraint | Resources | Work |
| --- | --- | --- | --- | --- | --- | --- | --- | --- | --- | --- | --- | --- |
| 27 | 4 | **Réalisation du document de déploiement** |  | 2.5d | 2006-01-14 | 2006-01-16 |  | 0d |  |  |  | 5h |
| 28 | 4.1 | DD : Rédaction du sommaire |  | 1h | 2006-01-14 | 2006-01-14 | 14 | 0d |  |  | Anthony Ogier | 1h |
| 29 | 4.2 | DD : Rédaction de chaque partie |  | 3h | 2006-01-15 | 2006-01-16 | 28 | 0d |  |  | Anthony Ogier | 3h |
| 30 | 4.3 | DD : Correction qualité |  | 1h | 2006-01-16 | 2006-01-16 | 29 | 0d |  |  | Laurent Barbisan | 1h |
| 31 | 5 | **Réalisation du manuel développeur** |  | 11.62d | 2006-01-05 | 2006-01-16 |  | 0d |  |  |  | 48h |
| 32 | 5.1 | MD : Réunion initiale |  | 3h | 2006-01-05 | 2006-01-06 | 23 | 0.42d | 0d | start no earlier than 2005-11-11 | Jean-Baptiste Renaudin; Laurent Barbisan; Anthony Ogier | 6h |
| 33 | 5.2 | MD : Rédaction du sommaire |  | 2.4h | 2006-01-06 | 2006-01-08 | 32 | 0.42d | 0d |  | Anthony Ogier; Jean-Baptiste Renaudin; Laurent Barbisan | 6h |
| 34 | 5.3 | MD : Rédaction de chaque partie |  | 12h | 2006-01-08 | 2006-01-14 | 33 | 0.42d | 0d |  | Laurent Barbisan; Anthony Ogier | 24h |
| 35 | 5.4 | MD : Correction & Harmonisation des parties |  | 4h | 2006-01-14 | 2006-01-16 | 34 | 0d |  |  | Laurent Barbisan; Caroline Rondini; Anthony Ogier; Jean-Baptiste Renaudin; Mathieu Mancel | 10h |
| 36 | 5.5 | MD : Correction qualité |  | 2h | 2006-01-16 | 2006-01-16 | 35 | 0d |  |  | Laurent Barbisan | 2h |
| 37 | 6 | Livraison de la version Bêta | milestone | 0h | 2006-01-18 | 2006-01-18 | 5 | 0d |  | finish no later than 2006-01-19 |  |  |
